Schedule from GanttProject, 2024-09-02 to 2024-12-27.

## Calendars

- Project calendar: Mon-Fri working; Sat-Sun off.

## Resources

| Resource |
| --- |
| Manager-QA |
| Test TL |
| Web TL |
| Back dev 1 |
| Back dev 2 |
| Back dev 3 |
| Architect+Devops |
| Front dev 1 |
| Front dev 2 |
| Front dev 3 |
| Sys dev 1 |
| Sys dev 2 |
| Sys dev 3 |
| Sys dev 4 |
| Test Analyst 1 |
| Test Analyst 2 |

## Schedule

| ID | Task | Type | Duration | Start | Finish | Predecessors | Complete | Resources | Cost |
| --- | --- | --- | --- | --- | --- | --- | --- | --- | --- |
| 1 | Общее управление |  | 85d | 2024-09-02 | 2024-12-27 |  |  | Manager-QA | 60 |
| 2 | Web: управление |  | 75d | 2024-09-16 | 2024-12-27 |  |  | Web TL | 40 |
| 3 | Тесты: управление |  | 75d | 2024-09-16 | 2024-12-27 |  |  | Test TL | 40 |
| 4 | Фаза 0: подготовка | milestone | 0d | 2024-09-13 | 2024-09-13 |  |  |  |  |
| 5 | Фронт: инструкции |  | 5d | 2024-09-02 | 2024-09-06 |  |  | Manager-QA | 3 |
| 6 | Фронт: заготовка |  | 5d | 2024-09-09 | 2024-09-13 |  |  | Manager-QA | 6 |
| 7 | Бэк: инструкции |  | 5d | 2024-09-02 | 2024-09-06 |  |  | Web TL | 3 |
| 8 | Бэк: заготовка |  | 5d | 2024-09-09 | 2024-09-13 |  |  | Web TL | 4 |
| 9 | Схема данных |  | 5d | 2024-09-02 | 2024-09-06 |  |  | Architect+Devops | 6 |
| 10 | Описание API |  | 5d | 2024-09-09 | 2024-09-13 |  |  | Architect+Devops | 6 |
| 11 | Exec: демо |  | 5d | 2024-09-02 | 2024-09-06 |  |  | Test Analyst 1 | 4 |
| 12 | Exec: инструкции |  | 5d | 2024-09-09 | 2024-09-13 |  |  | Test Analyst 2 | 3 |
| 13 | Тесты: заготовка |  | 10d | 2024-09-02 | 2024-09-13 |  |  | Test TL | 6 |
| 14 | Фаза 1 | milestone | 0d | 2024-10-25 | 2024-10-25 |  |  |  |  |
| 15 | Тесты: доанализ требований |  | 25d | 2024-09-16 | 2024-10-18 |  |  | Test Analyst 1 | 10 |
| 16 | Web: доанализ требований |  | 25d | 2024-09-16 | 2024-10-18 |  |  | Test Analyst 2 | 10 |
| 17 | Тесты: обучение |  | 5d | 2024-09-16 | 2024-09-20 |  |  | Sys dev 3; Sys dev 4 | 4 |
| 18 | Тесты исполняемого файла |  | 5d | 2024-09-23 | 2024-09-27 | 17 |  | Sys dev 3 | 2 |
| 19 | Тесты модуля конфигурации |  | 5d | 2024-09-23 | 2024-09-27 | 17 |  | Sys dev 4 | 2 |
| 20 | Тесты cli |  | 5d | 2024-09-30 | 2024-10-04 |  |  | Sys dev 3 | 2 |
| 21 | Тесты логгера |  | 5d | 2024-09-30 | 2024-10-04 |  |  | Sys dev 4 | 2 |
| 22 | Тесты IPC |  | 5d | 2024-10-07 | 2024-10-11 |  |  | Sys dev 3 | 2 |
| 23 | Тесты корректности кэша |  | 5d | 2024-10-07 | 2024-10-11 |  |  | Sys dev 4 | 2 |
| 24 | Exec: обучение |  | 5d | 2024-09-16 | 2024-09-20 |  |  | Sys dev 1; Sys dev 2 | 4 |
| 25 | Exec: запуск бинарника |  | 5d | 2024-09-23 | 2024-09-27 | 24 |  | Sys dev 1 | 4 |
| 26 | Exec: получение stdin |  | 5d | 2024-09-30 | 2024-10-04 | 25 |  | Sys dev 1 | 2 |
| 27 | Exec: получение сокета |  | 5d | 2024-09-30 | 2024-10-04 | 25 |  | Sys dev 2 | 2 |
| 28 | Exec: получение вывода |  | 5d | 2024-10-07 | 2024-10-11 | 25 |  | Sys dev 1 | 2 |
| 29 | Exec: получение статистик /proc |  | 5d | 2024-10-07 | 2024-10-11 | 25 |  | Sys dev 2 | 2 |
| 30 | Фронт: обучение |  | 5d | 2024-09-16 | 2024-09-20 |  |  | Front dev 1; Front dev 2; Front dev 3 | 6 |
| 31 | Авторизация пользователя |  | 5d | 2024-09-16 | 2024-09-20 |  |  | Back dev 1 | 4 |
| 32 | Изменение пароля |  | 5d | 2024-09-23 | 2024-09-27 | 31 |  | Back dev 1 | 4 |
| 33 | Получение групп для пользователя.. |  | 5d | 2024-09-30 | 2024-10-04 |  |  | Back dev 1 | 2 |
| 34 | Создание и редактирование группы |  | 5d | 2024-10-07 | 2024-10-11 | 33 |  | Back dev 1 | 2 |
| 35 | Интеграция: пользователи |  | 5d | 2024-10-14 | 2024-10-18 | 31, 32, 33, 34, 36, 37, 38, 39, 40, 41, 42 |  | Back dev 1; Front dev 1 | 8 |
| 36 | Восстановление пароля |  | 5d | 2024-09-23 | 2024-09-27 |  |  | Front dev 1 | 1 |
| 37 | Welcome страница |  | 5d | 2024-09-23 | 2024-09-27 |  |  | Front dev 1 | 1 |
| 38 | Страница входа |  | 5d | 2024-09-23 | 2024-09-27 |  |  | Front dev 1 | 1 |
| 39 | Навигация в шапке |  | 5d | 2024-09-30 | 2024-10-04 |  |  | Front dev 1 | 2 |
| 40 | Личный кабинет |  | 5d | 2024-09-30 | 2024-10-04 | 38 |  | Front dev 1 | 2 |
| 41 | Создание редактирование группы |  | 5d | 2024-10-07 | 2024-10-11 |  |  | Front dev 1 | 2 |
| 42 | Экран групп |  | 5d | 2024-10-07 | 2024-10-11 |  |  | Front dev 1 | 2 |
| 43 | Восстановление пароля |  | 5d | 2024-09-16 | 2024-09-20 |  |  | Back dev 2 | 1 |
| 44 | Имплементация создания теста |  | 5d | 2024-09-16 | 2024-09-20 |  |  | Back dev 2 | 2 |
| 45 | Имплементация получения теста |  | 5d | 2024-09-23 | 2024-09-27 | 44 |  | Back dev 2 | 1 |
| 46 | Имплементация поиска тестов по имени |  | 5d | 2024-09-23 | 2024-09-27 | 44 |  | Back dev 2 | 1 |
| 47 | Имплементация удаления тестов |  | 5d | 2024-09-30 | 2024-10-04 | 44 |  | Back dev 2 | 2 |
| 48 | Имплементация редактирования тестов |  | 5d | 2024-09-30 | 2024-10-04 | 44 |  | Back dev 2 | 1 |
| 49 | Интеграция: тесты |  | 5d | 2024-10-14 | 2024-10-18 | 44, 45, 46, 47, 48, 50, 51, 52, 53 |  | Back dev 2; Front dev 2 | 8 |
| 50 | Модальное окно создания теста |  | 5d | 2024-09-23 | 2024-09-27 |  |  | Front dev 2 | 3 |
| 51 | Модальное окно просмотра теста |  | 5d | 2024-09-30 | 2024-10-04 |  |  | Front dev 2 | 2 |
| 52 | Модальное окно редактирования теста |  | 5d | 2024-10-07 | 2024-10-11 |  | 30% | Front dev 2 | 1 |
| 53 | Страница просмотра тестов |  | 5d | 2024-10-07 | 2024-10-11 |  |  | Front dev 2 | 2 |
| 54 | Имплементация создания лабораторной |  | 5d | 2024-09-16 | 2024-09-20 |  |  | Back dev 3 | 2 |
| 55 | Имплементация получения лабораторной |  | 5d | 2024-09-16 | 2024-09-20 |  |  | Back dev 3 | 1 |
| 56 | Имплементация редактирования лабораторной |  | 5d | 2024-09-23 | 2024-09-27 | 54 |  | Back dev 3 | 1 |
| 57 | Имплементация удаления лабораторной |  | 5d | 2024-09-23 | 2024-09-27 | 54 |  | Back dev 3 | 2 |
| 58 | Получение попыток сдачи |  | 5d | 2024-09-30 | 2024-10-04 |  |  | Back dev 3 | 2 |
| 59 | Интеграция: лабораторные |  | 5d | 2024-10-14 | 2024-10-18 | 54, 55, 56, 57, 60, 61, 62, 63 |  | Back dev 2; Front dev 3 | 8 |
| 60 | Модальное окно создания лабораторной |  | 5d | 2024-09-23 | 2024-09-27 |  |  | Front dev 3 | 2 |
| 61 | Модальное окно редактирования лабораторной |  | 5d | 2024-09-23 | 2024-09-27 |  |  | Front dev 3 | 1 |
| 62 | Страница просмотра лабораторной |  | 5d | 2024-09-30 | 2024-10-04 |  |  | Front dev 3 | 3 |
| 63 | Страница просмотра лабораторных |  | 5d | 2024-10-07 | 2024-10-11 |  |  | Front dev 3 | 3 |
| 64 | Фаза 2 | milestone | 0d | 2024-11-29 | 2024-11-29 |  |  |  |  |
| 65 | Тесты: доанализ требований 2 |  | 20d | 2024-10-28 | 2024-11-22 |  |  | Test Analyst 1 | 8 |
| 66 | Web: доанализ требований 2 |  | 20d | 2024-10-28 | 2024-11-22 |  |  | Test Analyst 2 | 8 |
| 67 | Тесты многозадачности |  | 5d | 2024-10-28 | 2024-11-01 |  |  | Sys dev 3 | 2 |
| 68 | Тесты сети |  | 10d | 2024-10-28 | 2024-11-08 |  |  | Sys dev 4 | 2 |
| 69 | Тесты кэша |  | 5d | 2024-11-11 | 2024-11-15 |  |  | Sys dev 3 | 2 |
| 70 | Нагрузочные тесты |  | 10d | 2024-11-04 | 2024-11-15 |  |  | Sys dev 4 | 6 |

| ID | Task | Type | Duration | Start | Finish | Predecessors | Resources | Cost |
| --- | --- | --- | --- | --- | --- | --- | --- | --- |
| 71 | Exec: жесткие ограничения cgroup 1 |  | 15d | 2024-10-28 | 2024-11-15 |  | Sys dev 1 | 6 |
| 72 | Exec: жесткие ограничения cgroup 2 |  | 15d | 2024-10-28 | 2024-11-15 |  | Sys dev 2 | 6 |
| 73 | Часть модального окна создания/редактирования лабораторной - форма выбора тестов |  | 5d | 2024-10-28 | 2024-11-01 | 46, 60, 61 | Front dev 3 | 1 |
| 74 | Страница просмотра попыток сдачи |  | 5d | 2024-11-04 | 2024-11-08 | 58 | Front dev 3 | 2 |
| 75 | Модальное окно загрузки лабораторных |  | 5d | 2024-11-11 | 2024-11-15 |  | Front dev 3 | 2 |
| 76 | Интеграция попыток сдачи |  | 5d | 2024-11-18 | 2024-11-22 |  | Back dev 3; Front dev 3 | 8 |
| 77 | Проверка лабораторной в новой попытке сдачи |  | 10d | 2024-10-28 | 2024-11-08 |  | Back dev 3 | 8 |
| 78 | Создание сессий сдачи |  | 5d | 2024-10-28 | 2024-11-01 |  | Back dev 2 | 2 |
| 79 | Получение сессий сдачи |  | 5d | 2024-11-04 | 2024-11-08 |  | Back dev 2 | 2 |
| 80 | Поиск и фильтрация сессий сдачи |  | 5d | 2024-11-11 | 2024-11-15 |  | Back dev 2 | 2 |
| 81 | Интеграция сессий сдачи |  | 5d | 2024-11-18 | 2024-11-22 |  | Back dev 2; Front dev 2 | 8 |
| 82 | Просмотр сессий сдачи |  | 5d | 2024-10-28 | 2024-11-01 |  | Front dev 2 | 2 |
| 83 | Просмотр сессий сдачи студентов с поиском |  | 5d | 2024-11-04 | 2024-11-08 |  | Front dev 2 | 2 |
| 84 | Модификация страницы просмотра сессии сдачи - для преподавателя |  | 5d | 2024-11-11 | 2024-11-15 |  | Front dev 2 | 1.5 |
| 85 | Личная информация по всем пользователям |  | 5d | 2024-10-28 | 2024-11-01 |  | Back dev 1 | 2 |
| 86 | Личная информация пользователя |  | 5d | 2024-10-28 | 2024-11-01 |  | Back dev 1 | 2 |
| 87 | Создание/редактирование пользователя |  | 5d | 2024-11-04 | 2024-11-08 |  | Back dev 1 | 2 |
| 88 | Создание множества пользователей |  | 5d | 2024-11-11 | 2024-11-15 |  | Back dev 1 | 2 |
| 89 | Интеграция пользователей |  | 5d | 2024-11-18 | 2024-11-22 |  | Back dev 1; Front dev 1 | 8 |
| 90 | Модалки создания редактирования пользователя |  | 5d | 2024-10-28 | 2024-11-01 |  | Front dev 1 | 2 |
| 91 | Экран всех пользователей для админа |  | 5d | 2024-11-04 | 2024-11-08 |  | Front dev 1 | 2 |
| 92 | Переход на экран группы |  | 5d | 2024-11-11 | 2024-11-15 |  | Front dev 1 | 2 |
| 93 | Фаза 3 | milestone | 0d | 2024-12-27 | 2024-12-27 |  |  |  |
| 94 | Тесты: доанализ требований 3 |  | 20d | 2024-12-02 | 2024-12-27 |  | Test Analyst 1 | 8 |
| 95 | Web: доанализ требований 3 |  | 20d | 2024-12-02 | 2024-12-27 |  | Test Analyst 2 | 8 |
| 96 | Модификация страницы просмотра лабораторных - для студента |  | 5d | 2024-12-02 | 2024-12-06 |  | Front dev 3 | 1.5 |
| 97 | Модификация страницы просмотра лабораторных - для учителя |  | 5d | 2024-12-02 | 2024-12-06 |  | Front dev 3 | 1.5 |
| 98 | Модификация страницы просмотра лабораторной - для студента |  | 5d | 2024-12-09 | 2024-12-13 |  | Front dev 3 | 1.5 |
| 99 | Модификация страницы просмотра лабораторной - для учителя |  | 5d | 2024-12-09 | 2024-12-13 |  | Front dev 3 | 1.5 |
| 100 | Модификация страницы просмотра попытки сдачи - для преподавателя |  | 5d | 2024-12-16 | 2024-12-20 |  | Front dev 3 | 1.5 |
| 101 | Переход к лабораторной по студенту |  | 5d | 2024-12-02 | 2024-12-06 |  | Front dev 2 | 1.5 |
| 102 | Фронт: исправление багов |  | 20d | 2024-12-02 | 2024-12-27 |  | Front dev 1; Front dev 2 | 20 |
| 103 | Бэк: исправление багов |  | 20d | 2024-12-02 | 2024-12-27 |  | Back dev 2; Back dev 3 | 20 |
| 104 | Данные для рейтинговой таблицы |  | 10d | 2024-12-02 | 2024-12-13 |  | Back dev 1 | 10 |
| 105 | Интеграция рейтинговой таблицы |  | 5d | 2024-12-23 | 2024-12-27 |  | Back dev 1; Front dev 1 | 8 |
| 106 | Рейтинговая таблица |  | 10d | 2024-12-02 | 2024-12-13 |  | Front dev 1 | 10 |
| 107 | Сортировки по срезу |  | 5d | 2024-12-16 | 2024-12-20 |  | Front dev 2 | 1.5 |
| 108 | Тесты под valgrind и санитайзерами |  | 10d | 2024-12-02 | 2024-12-13 |  | Sys dev 3 | 6 |
| 109 | Тесты с ограниченными ресурсами |  | 10d | 2024-12-02 | 2024-12-13 |  | Sys dev 4 | 6 |
| 110 | Exec: ограничение fs, mount |  | 10d | 2024-12-02 | 2024-12-13 |  | Sys dev 1 | 6 |
| 111 | Exec: ограничение network workspace |  | 10d | 2024-12-02 | 2024-12-13 |  | Sys dev 2 | 6 |
